# Unipik

Schedule from GanttProject, 2016-01-29 to 2016-10-13.
UNICEF
Outil de gestion des interventions externes

## Calendars

- Project calendar: Mon-Fri working; Sat-Sun off. Exceptions (off unless hours are given): 2016-03-28 (Easter Monday), 2016-05-01 (Labour Day), 2016-05-05 (Ascension Day), 2016-05-08 (V-E Day), 2016-05-16 (Whitmonday), 2016-07-14 (Bastille Day), 2016-08-15 (Assumption Day).

## Resources

| Resource | Group |
| --- | --- |
| Melissa Bignoux | Respo GC |
| Julie Pain | Respo Dev |
| Matthieu Martins-Baltar | Respo Réseau |
| Pierre Porche |  |
| Florian Leriche |  |
| Kafui Atanley | Respo Qualité |
| Francois Decq |  |

## Schedule

| ID | Task | Duration | Start | Finish | Predecessors | Complete | Resources |
| --- | --- | --- | --- | --- | --- | --- | --- |
| 1 | E/A | 5d | 2016-01-29 | 2016-02-04 |  | 100% | Julie Pain; Florian Leriche |
| 2 | DSE | 5d | 2016-02-01 | 2016-02-05 |  | 100% | Melissa Bignoux [50%]; Matthieu Martins-Baltar [50%]; Kafui Atanley [50%] |
| 3 | DSI | 18d | 2016-02-01 | 2016-02-24 |  | 100% | Melissa Bignoux [50%]; Matthieu Martins-Baltar [50%]; Kafui Atanley [50%] |
| 4 | PTV - lot1 | 5d | 2016-02-25 | 2016-03-02 | 2, 3 | 100% | Melissa Bignoux [50%]; Matthieu Martins-Baltar [50%]; Kafui Atanley [50%] |
| 5 | Formation ArgoUml | 1d | 2016-02-26 | 2016-02-26 |  | 100% |  |
| 6 | DCP - lot1 | 5d | 2016-02-25 | 2016-03-02 | 2, 3 | 100% |  |
| 7 | PTI - lot1 | 5d | 2016-03-03 | 2016-03-09 | 4 | 100% |  |
| 8 | Formation Symphony | 15d | 2016-03-07 | 2016-03-25 |  | 100% | Melissa Bignoux [80%]; Julie Pain [80%]; Matthieu Martins-Baltar [60%]; Florian Leriche [60%]; Kafui Atanley [60%] |
| 9 | PTU - lot1 | 7d | 2016-03-10 | 2016-03-18 | 7 | 100% |  |
| 10 | Cahier de Recette - lot1 | 2d | 2016-03-16 | 2016-03-17 |  | 100% |  |
| 11 | Developpement + Tests - lot1 | 7d | 2016-03-10 | 2016-03-18 |  | 100% | Matthieu Martins-Baltar [75%]; Florian Leriche [75%]; Kafui Atanley [75%] |
| 12 | Formation PHPUnit TU | 4d | 2016-03-29 | 2016-04-01 |  |  | Melissa Bignoux [20%]; Julie Pain [20%]; Matthieu Martins-Baltar [20%]; Florian Leriche [20%]; Kafui Atanley [20%] |
| 13 | PTV - lot2 | 4d | 2016-03-29 | 2016-04-01 | 11FS+5d | 100% | Julie Pain [10%]; Matthieu Martins-Baltar [20%]; Florian Leriche; Kafui Atanley |
| 14 | DCP - lot2 | 16d | 2016-03-29 | 2016-04-19 | 11FS+5d | 100% | Melissa Bignoux; Julie Pain [10%]; Matthieu Martins-Baltar [20%] |
| 15 | Formation PHP Unit TI | 4d | 2016-03-29 | 2016-04-01 |  |  | Matthieu Martins-Baltar [20%]; Florian Leriche [20%]; Kafui Atanley [20%] |
| 16 | Formation Bootstrap | 4d | 2016-03-29 | 2016-04-01 |  | 100% | Julie Pain [80%]; Matthieu Martins-Baltar [60%] |
| 17 | PTI - lot2 | 1d | 2016-04-18 | 2016-04-18 | 13FS+10d | 100% |  |
| 18 | DCD - lot2 | 16d | 2016-03-29 | 2016-04-19 |  | 100% |  |
| 19 | PTU - lot2 | 2d | 2016-04-19 | 2016-04-20 | 17 | 100% |  |
| 20 | Modèle relationnel | 10d | 2016-04-18 | 2016-04-29 |  |  |  |
| 21 | Developpement + tests - lot2 | 18d | 2016-05-02 | 2016-05-27 | 18, 20 |  |  |
| 22 | Reprise en main des outils | 5d | 2016-09-05 | 2016-09-09 |  | 100% | Melissa Bignoux; Julie Pain; Matthieu Martins-Baltar; Pierre Porche; Florian Leriche; Kafui Atanley; Francois Decq |
| 23 | Scripts création BD | 2d | 2016-09-12 | 2016-09-13 | 22 | 100% | Julie Pain |
| 24 | Scripts modification BD | 2d | 2016-09-12 | 2016-09-13 | 22 | 100% | Melissa Bignoux |
| 25 | Repository pour séléction en BD | 6d | 2016-09-12 | 2016-09-19 | 22 | 85% | Julie Pain; Florian Leriche [0%] |
| 26 | Diagramme d'URL | 1d | 2016-09-12 | 2016-09-12 | 22 | 80% |  |
| 27 | Créer Bénévole BE | 4d | 2016-09-12 | 2016-09-15 | 22 | 100% | Florian Leriche; Francois Decq [50%] |
| 28 | Créer Bénévole FE | 3d | 2016-09-16 | 2016-09-20 | 22, 26, 27 | 100% |  |
| 29 | Créer Etablissement BE | 3d | 2016-09-21 | 2016-09-23 | 22, 27, 28 | 100% | Florian Leriche |
| 30 | Créer Etablissement FE | 3d | 2016-09-26 | 2016-09-28 | 22, 26, 29 | 100% | Melissa Bignoux |
| 31 | Formulaire de demande BE | 5d | 2016-09-29 | 2016-10-05 | 22, 30 | 100% | Kafui Atanley |
| 32 | Formulaire de demande FE | 6d | 2016-10-06 | 2016-10-13 | 26, 31 | 75% |  |
| 33 | Tests Unitaire | 7d | 2016-09-16 | 2016-09-26 |  | 35% |  |
| 34 | Modifier Bénévole BE | 1d | 2016-09-16 | 2016-09-16 | 22, 27 | 100% |  |
| 35 | Modifier Bénévole FE | 1d | 2016-09-19 | 2016-09-19 | 22, 26, 34 | 100% |  |
| 36 | Modifier Etablissement BE | 3d | 2016-09-19 | 2016-09-21 | 22, 26, 34 | 100% |  |
| 37 | Modifier Etablissement FE | 1d | 2016-09-22 | 2016-09-22 | 22, 26, 36 | 100% |  |
| 38 | Supprimer Bénévole BE | 2d | 2016-09-19 | 2016-09-20 | 22, 34 | 100% |  |
| 39 | Supprimer Bénévole FE | 1d | 2016-09-21 | 2016-09-21 | 22, 26, 38 | 100% |  |
| 40 | Supprimer Etablissement BE | 2d | 2016-09-21 | 2016-09-22 | 22, 38 | 100% |  |
| 41 | Supprimer Etablissment FE | 1d | 2016-09-23 | 2016-09-23 | 22, 26, 40 | 100% |  |
| 42 | Formation PHP + Symfony | 6d | 2016-09-12 | 2016-09-19 |  | 100% |  |
