# Unipik

Schedule from GanttProject, 2016-01-29 to 2016-12-12.
UNICEF
Outil de gestion des interventions externes

## Calendars

- Project calendar: Mon-Fri working; Sat-Sun off. Exceptions (off unless hours are given): 2016-03-28 (Easter Monday), 2016-05-01 (Labour Day), 2016-05-05 (Ascension Day), 2016-05-08 (V-E Day), 2016-05-16 (Whitmonday), 2016-07-14 (Bastille Day), 2016-08-15 (Assumption Day), 2016-11-01 (All Saints Day), 2016-11-11 (Armistice Day).

## Resources

| Resource | Group |
| --- | --- |
| Melissa Bignoux | Respo GC |
| Julie Pain | Respo Dev |
| Matthieu Martins-Baltar | Respo Réseau |
| Pierre Porche |  |
| Florian Leriche |  |
| Kafui Atanley | Respo Qualité |
| Francois Decq |  |

## Schedule

| ID | WBS | Task | Duration | Start | Finish | Predecessors | Complete | Resources |
| --- | --- | --- | --- | --- | --- | --- | --- | --- |
| 1 | 1 | **Semestre 1** | 83d | 2016-01-29 | 2016-05-27 |  | 76% |  |
| 2 | 1.1 | E/A | 5d | 2016-01-29 | 2016-02-04 |  | 100% | Julie Pain; Florian Leriche |
| 3 | 1.2 | DSE | 5d | 2016-02-01 | 2016-02-05 |  | 100% | Melissa Bignoux [50%]; Matthieu Martins-Baltar [50%]; Kafui Atanley [50%] |
| 4 | 1.3 | DSI | 18d | 2016-02-01 | 2016-02-24 |  | 100% | Melissa Bignoux [50%]; Matthieu Martins-Baltar [50%]; Kafui Atanley [50%] |
| 5 | 1.4 | PTV - lot1 | 5d | 2016-02-25 | 2016-03-02 | 3, 4 | 100% | Melissa Bignoux [50%]; Matthieu Martins-Baltar [50%]; Kafui Atanley [50%] |
| 6 | 1.5 | Formation ArgoUml | 1d | 2016-02-26 | 2016-02-26 |  | 100% |  |
| 7 | 1.6 | DCP - lot1 | 5d | 2016-02-25 | 2016-03-02 | 3, 4 | 100% |  |
| 8 | 1.7 | PTI - lot1 | 5d | 2016-03-03 | 2016-03-09 | 5 | 100% |  |
| 9 | 1.8 | Formation Symphony | 15d | 2016-03-07 | 2016-03-25 |  | 100% | Melissa Bignoux [80%]; Julie Pain [80%]; Matthieu Martins-Baltar [60%]; Florian Leriche [60%]; Kafui Atanley [60%] |
| 10 | 1.9 | PTU - lot1 | 7d | 2016-03-10 | 2016-03-18 | 8 | 100% |  |
| 11 | 1.10 | Cahier de Recette - lot1 | 2d | 2016-03-16 | 2016-03-17 |  | 100% |  |
| 12 | 1.11 | Developpement + Tests - lot1 | 7d | 2016-03-10 | 2016-03-18 |  | 100% | Matthieu Martins-Baltar [75%]; Florian Leriche [75%]; Kafui Atanley [75%] |
| 13 | 1.12 | Formation PHPUnit TU | 4d | 2016-03-29 | 2016-04-01 |  |  | Melissa Bignoux [20%]; Julie Pain [20%]; Matthieu Martins-Baltar [20%]; Florian Leriche [20%]; Kafui Atanley [20%] |
| 14 | 1.13 | PTV - lot2 | 4d | 2016-03-29 | 2016-04-01 | 12FS+5d | 100% | Julie Pain [10%]; Matthieu Martins-Baltar [20%]; Florian Leriche; Kafui Atanley |
| 15 | 1.14 | DCP - lot2 | 16d | 2016-03-29 | 2016-04-19 | 12FS+5d | 100% | Melissa Bignoux; Julie Pain [10%]; Matthieu Martins-Baltar [20%] |
| 16 | 1.15 | Formation PHP Unit TI | 4d | 2016-03-29 | 2016-04-01 |  |  | Matthieu Martins-Baltar [20%]; Florian Leriche [20%]; Kafui Atanley [20%] |
| 17 | 1.16 | Formation Bootstrap | 4d | 2016-03-29 | 2016-04-01 |  | 100% | Julie Pain [80%]; Matthieu Martins-Baltar [60%] |
| 18 | 1.17 | PTI - lot2 | 1d | 2016-04-18 | 2016-04-18 | 14FS+10d | 100% |  |
| 19 | 1.18 | DCD - lot2 | 16d | 2016-03-29 | 2016-04-19 |  | 100% |  |
| 20 | 1.19 | PTU - lot2 | 2d | 2016-04-19 | 2016-04-20 | 18 | 100% |  |
| 21 | 1.20 | Modèle relationnel | 10d | 2016-04-18 | 2016-04-29 |  |  |  |
| 22 | 1.21 | Developpement + tests - lot2 | 18d | 2016-05-02 | 2016-05-27 | 19, 21 |  |  |
| 23 | 2 | **Semestre 2 lot 2** | 29d | 2016-09-05 | 2016-10-13 |  | 94% |  |
| 24 | 2.1 | Reprise en main des outils | 5d | 2016-09-05 | 2016-09-09 |  | 100% | Melissa Bignoux; Julie Pain; Matthieu Martins-Baltar; Pierre Porche; Florian Leriche; Kafui Atanley; Francois Decq |
| 25 | 2.2 | Scripts création BD | 2d | 2016-09-12 | 2016-09-13 | 24 | 100% | Julie Pain |
| 26 | 2.3 | Scripts modification BD | 2d | 2016-09-12 | 2016-09-13 | 24 | 100% | Melissa Bignoux |
| 27 | 2.4 | Repository pour séléction en BD | 6d | 2016-09-12 | 2016-09-19 | 24 | 100% | Julie Pain; Florian Leriche [0%] |
| 28 | 2.5 | Diagramme d'URL | 1d | 2016-09-12 | 2016-09-12 | 24 | 100% |  |
| 29 | 2.6 | Créer Bénévole BE | 4d | 2016-09-12 | 2016-09-15 | 24 | 100% | Florian Leriche; Francois Decq [50%] |
| 30 | 2.7 | Créer Bénévole FE | 3d | 2016-09-16 | 2016-09-20 | 24, 28, 29 | 100% |  |
| 31 | 2.8 | Créer Etablissement BE | 3d | 2016-09-21 | 2016-09-23 | 24, 29, 30 | 100% | Florian Leriche |
| 32 | 2.9 | Créer Etablissement FE | 3d | 2016-09-26 | 2016-09-28 | 24, 28, 31 | 100% | Melissa Bignoux |
| 33 | 2.10 | Formulaire de demande BE | 5d | 2016-09-29 | 2016-10-05 | 24, 32 | 100% | Kafui Atanley |
| 34 | 2.11 | Formulaire de demande FE | 6d | 2016-10-06 | 2016-10-13 | 28, 33 | 100% |  |
| 35 | 2.12 | Tests Unitaire | 7d | 2016-09-16 | 2016-09-26 |  | 50% |  |
| 36 | 2.13 | Modifier Bénévole BE | 1d | 2016-09-16 | 2016-09-16 | 24, 29 | 100% |  |
| 37 | 2.14 | Modifier Bénévole FE | 1d | 2016-09-19 | 2016-09-19 | 24, 28, 36 | 100% |  |
| 38 | 2.15 | Modifier Etablissement BE | 3d | 2016-09-19 | 2016-09-21 | 24, 28, 36 | 100% |  |
| 39 | 2.16 | Modifier Etablissement FE | 1d | 2016-09-22 | 2016-09-22 | 24, 28, 38 | 100% |  |
| 40 | 2.17 | Supprimer Bénévole BE | 2d | 2016-09-19 | 2016-09-20 | 24, 36 | 100% |  |
| 41 | 2.18 | Supprimer Bénévole FE | 1d | 2016-09-21 | 2016-09-21 | 24, 28, 40 | 100% |  |
| 42 | 2.19 | Supprimer Etablissement BE | 2d | 2016-09-21 | 2016-09-22 | 24, 40 | 100% |  |
| 43 | 2.20 | Supprimer Etablissment FE | 1d | 2016-09-23 | 2016-09-23 | 24, 28, 42 | 100% |  |
| 44 | 2.21 | Formation PHP + Symfony | 6d | 2016-09-12 | 2016-09-19 |  | 100% |  |
| 45 | 3 | prépa revue | 15d | 2016-10-14 | 2016-11-04 | 23 | 100% |  |
| 46 | 4 | Phase de specification lot3 | 1d | 2016-11-07 | 2016-11-07 | 45 | 100% |  |
| 47 | 5 | Phase de conception lot3 | 1d | 2016-11-08 | 2016-11-08 | 46 | 100% |  |

| ID | WBS | Task | Duration | Start | Finish | Predecessors | Complete |
| --- | --- | --- | --- | --- | --- | --- | --- |
| 48 | 6 | **Semestre 2 lot 3** | 14d | 2016-11-09 | 2016-11-29 | 47 | 100% |
| 49 | 6.1 | Géolocalisation BE | 1d | 2016-11-09 | 2016-11-09 |  | 100% |
| 50 | 6.2 | Carte des interventions | 1d | 2016-11-09 | 2016-11-09 |  | 100% |
| 51 | 6.3 | Carte des établissements | 1d | 2016-11-09 | 2016-11-09 |  | 100% |
| 52 | 6.4 | Filtres interventions à +/- 10km | 5d | 2016-11-10 | 2016-11-17 | 49 | 100% |
| 53 | 6.5 | Mails - problème mailto | 1d | 2016-11-09 | 2016-11-09 |  | 100% |
| 54 | 6.6 | Filtres pour mailing | 5d | 2016-11-10 | 2016-11-17 | 53 | 100% |
| 55 | 6.7 | Crontab pour étaler les envois | 3d | 2016-11-10 | 2016-11-15 | 53 | 100% |
| 56 | 6.8 | Obtenir mails + plaquettes | 1d | 2016-11-16 | 2016-11-16 |  | 100% |
| 57 | 6.9 | Mails de rappel | 2d | 2016-11-18 | 2016-11-21 | 54 | 100% |
| 58 | 6.10 | Bouton "demande associée" sur interv | 3d | 2016-11-09 | 2016-11-14 |  | 100% |
| 59 | 6.11 | Sur modif interv : notes avec les moments | 2d | 2016-11-15 | 2016-11-16 | 58 | 100% |
| 60 | 6.12 | Warning quand date != demande | 2d | 2016-11-17 | 2016-11-18 | 59 | 100% |
| 61 | 6.13 | Form sans ID | 7d | 2016-11-21 | 2016-11-29 | 60 | 100% |
| 62 | 6.14 | Form : Enlever les négatifs dans nb participants | 1d | 2016-11-09 | 2016-11-09 |  | 100% |
| 63 | 6.15 | Page recapitulative + print | 3d | 2016-11-10 | 2016-11-15 | 62 | 100% |
| 64 | 6.16 | Problème : date passé : interventions rouges quelque soit le bénévole | 2d | 2016-11-16 | 2016-11-17 | 63 | 100% |
| 65 | 6.17 | Liste : s'attribuer -> désattribuer -> s'attribuer | 2d | 2016-11-18 | 2016-11-21 | 64 | 100% |
| 66 | 6.18 | Planning : détails sur une journée | 3d | 2016-11-22 | 2016-11-24 | 65 | 100% |
| 67 | 6.19 | Corriger remarques client | 5d | 2016-11-09 | 2016-11-16 |  | 100% |
| 68 | 6.20 | Mes interventions + filtres | 1d | 2016-11-22 | 2016-11-22 | 65 | 100% |
| 69 | 7 | **Semestre 2 lot 4** | 9d | 2016-11-30 | 2016-12-12 | 48 | 3% |
| 70 | 7.1 | Coder l'ID pour mail | 1d | 2016-11-30 | 2016-11-30 |  |  |
| 71 | 7.2 | Hashage de l'id dans le lien | 2d | 2016-12-01 | 2016-12-02 | 70 |  |
| 72 | 7.3 | Ventes sur stand | 2d | 2016-12-05 | 2016-12-06 | 71 |  |
| 73 | 7.4 | Consultation Frimousse : vente | 2d | 2016-12-07 | 2016-12-08 | 72 |  |
| 74 | 7.5 | Ajouter rôles | 2d | 2016-12-09 | 2016-12-12 | 73 |  |
| 75 | 7.6 | Stats nb interventions | 2d | 2016-12-02 | 2016-12-05 |  |  |
| 76 | 7.7 | Stats Chiffre d'affaire | 1d | 2016-12-07 | 2016-12-07 | 72, 75 |  |
| 77 | 7.8 | Map intervention ronds population-like | 1d | 2016-12-08 | 2016-12-08 | 76 |  |
| 78 | 7.9 | Optimiser les requetes | 1d | 2016-12-09 | 2016-12-09 | 77 |  |
